# 星火G3.5 1A

Schedule from a web Gantt chart, 2025-08-08 to 2026-04-10.
Every day is a working day

## Schedule

| ID | WBS | Task | Duration | Start | Finish | Predecessors | Complete | Status |
| --- | --- | --- | --- | --- | --- | --- | --- | --- |
| 2 | 1 | **1st device lot** | 154d | 2025-08-08 | 2026-01-08 |  | 87% | done |
| 3 | 1.1 | Layout ready | 4d | 2025-08-08 | 2025-08-11 |  | 100% | done |
| 4 | 1.2 | Mask in & W/S | 28d | 2025-08-12 | 2025-09-08 | 3 | 100% | done |
| 5 | 1.3 | 1st device lot F/O & CP | 20d | 2025-09-09 | 2025-09-28 | 4 | 100% | done |
| 6 | 1.4 | **盲封 验证动态性能&RE (动态已fail)** | 102d | 2025-09-29 | 2026-01-08 |  | 100% | done |
| 7 | 1.4.1 | Assembly | 25d | 2025-09-29 | 2025-10-23 | 5 | 100% | done |
| 8 | 1.4.2 | Package ready | 2d | 2025-10-24 | 2025-10-25 | 7 | 100% | done |
| 9 | 1.4.3 | CRE 动态验证 | 6d | 2025-10-26 | 2025-10-31 | 8 | 100% | done |
| 10 | 1.4.4 | **RE 验证** | 60d | 2025-11-10 | 2026-01-08 |  | 100% | done |
| 11 | 1.4.4.1 | RE 168H | 15d | 2025-11-10 | 2025-11-24 |  | 100% | done |
| 12 | 1.4.4.2 | RE 1000H | 60d | 2025-11-10 | 2026-01-08 |  | 100% | done |
| 13 | 1.4.5 | Bench test | 5d | 2025-11-10 | 2025-11-14 |  | 100% | done |
| 14 | 1.5 | 蓝膜样品准备 | 30d | 2025-11-25 | 2025-12-24 | 11 |  | failed |
| 15 | 1.6 | **验证Vth & CP/system Idsat** | 69d | 2025-10-17 | 2025-12-24 |  | 100% | done |
| 16 | 1.6.1 | wafer寄出 | 1d | 2025-10-17 | 2025-10-17 |  | 100% | done |
| 17 | 1.6.2 | Assemby | 29d | 2025-10-18 | 2025-11-15 | 16 | 100% | done |
| 18 | 1.6.3 | 动态电流 | 8d | 2025-11-23 | 2025-11-30 |  | 100% | done |
| 19 | 2 | **3合1(GO/GM/FP1)** | 130d | 2025-11-15 | 2026-03-24 |  | 13% |  |
| 20 | 2.1 | Wafer Process | 17d | 2025-11-15 | 2025-12-01 |  | 100% | done |
| 21 | 2.2 | WLRE | 10d | 2025-12-02 | 2025-12-11 | 20 | 100% | done |
| 22 | 2.3 | PKG+FT | 27d | 2025-12-02 | 2025-12-28 | 20 |  |  |
| 23 | 2.4 | PE Bench | 12d | 2025-12-29 | 2026-01-09 | 22 |  | waiting |
| 24 | 2.5 | DRon | 8d | 2025-12-29 | 2026-01-05 | 22 |  | waiting |
| 25 | 2.6 | RE 168H | 16d | 2025-12-29 | 2026-01-13 | 22 |  | waiting |
| 26 | 2.7 | RE 500H | 35d | 2026-01-04 | 2026-02-07 |  |  | waiting |
| 27 | 2.8 | RE 1008H | 80d | 2026-01-04 | 2026-03-24 |  |  | waiting |

| ID | WBS | Task | Type | Duration | Start | Finish | Predecessors | Complete | Status |
| --- | --- | --- | --- | --- | --- | --- | --- | --- | --- |
| 28 | 3 | **4合1(GO/GM/GP1/AA remove, pGaN/OHO)** |  | 131d | 2025-12-01 | 2026-04-10 |  | 14% |  |
| 29 | 3.1 | Wafer process | fixed start | 22d | 2025-12-01 | 2025-12-22 |  | 100% | done |
| 30 | 3.2 | WLRE |  | 4d | 2025-12-23 | 2025-12-26 | 29 |  |  |
| 31 | 3.3 | PKG+FT |  | 25d | 2025-12-27 | 2026-01-20 | 30 |  | waiting |
| 32 | 3.4 | D-RON |  | 10d | 2026-01-21 | 2026-01-30 | 31 |  | waiting |
| 33 | 3.5 | PE Bench |  | 7d | 2026-01-21 | 2026-01-27 | 31 |  | waiting |
| 34 | 3.6 | RE168 |  | 14d | 2026-01-21 | 2026-02-03 | 31 |  | waiting |
| 35 | 3.7 | RE1000 |  | 80d | 2026-01-21 | 2026-04-10 | 31 |  | waiting |
| 36 | 4 | **2nd/3rd Qual. lot** |  | 144d | 2025-08-08 | 2025-12-29 |  | 21% |  |
| 37 | 4.1 | Wafer process |  | 1d | 2025-12-27 | 2025-12-27 | 30 | 22% | waiting |
| 38 | 4.2 | PKG-FT |  | 1d | 2025-12-28 | 2025-12-28 | 37 | 25% | waiting |
| 39 | 4.3 | RE168 |  | 1d | 2025-12-29 | 2025-12-29 | 38 | 14% | waiting |
| 40 | 4.4 | RE1000 |  | 1d | 2025-08-08 | 2025-08-08 |  | 80% |  |
| 41 | 4.5 | PE bench test |  | 1d | 2025-12-29 | 2025-12-29 | 38 | 7% | waiting |
| 42 | 4.6 | D-RON |  | 1d | 2025-12-29 | 2025-12-29 | 38 |  | waiting |
| 43 | 4.7 | AE |  | 1d | 2025-12-29 | 2025-12-29 | 38 |  | waiting |
